Schedule from MS Project, 2025-08-18 to 2025-12-12, A marks actual dates.
Microsoft

## Calendars

- Estándar: Mon-Fri 09:00-13:00, 15:00-19:00; Sat-Sun off. Exceptions (off unless hours are given): 2025-09-18 to 2025-09-19 (Fiestas Patrias), 2025-10-12 (Día del Encuentro de Dos Mundos), 2025-11-01 (Día de Todos los Santos), 2025-12-08 (Inmaculada Concepción).

## Resources

| Resource |
| --- |
| Gustavo Pezzini |
| Vicente Galvez |
| René Veloso |

## Schedule

| ID | WBS | Task | Duration | Start | Finish | Predecessors | Complete | Remaining | Total slack | Free slack | Constraint | Resources | Work | Actual work |
| --- | --- | --- | --- | --- | --- | --- | --- | --- | --- | --- | --- | --- | --- | --- |
| 1 | 1 | **Proyecto Sistema FoodTruck** | 81.12d? | 2025-08-18 A | 2025-12-12 |  | 36% | 51.6d? | 0d |  |  |  | 282h | 205.58h |
| 2 | 1.1 | **Levantamiento de requerimientos y planificación macro** | 14.9d | 2025-08-18 A | 2025-09-05 |  | 89% | 1.57d | 0.07d |  |  |  | 63h | 61.2h |
| 3 | 1.1.1 | Recopilar requerimientos funcionales y no funcionales | 27h | 2025-08-18 A | 2025-08-21 A |  | 100% |  |  |  |  | Gustavo Pezzini [25%] | 27h | 27h |
| 4 | 1.1.2 | Definir backlog inicial en Azure DevOps | 18h | 2025-08-25 A | 2025-08-27 A | 3 | 100% |  |  |  |  | René Veloso [25%] | 18h | 18h |
| 5 | 1.1.3 | Planificación macro del proyecto | 23.4h | 2025-08-28 A | 2025-09-05 | 4 | 69% | 7.2h | 0.07d | 0d |  | René Veloso [25%] | 18h | 16.2h |
| 6 | 1.2 | **Análisis y diseño de base de datos + Diagramas** | 8d | 2025-09-01 A | 2025-09-11 |  | 88% | 0.97d | 62.88d |  |  |  | 60h | 58h |
| 7 | 1.2.1 | Análisis de entidades | 24h | 2025-09-01 A | 2025-09-08 | 5 | 67% | 8h | 61.9d |  |  | René Veloso [25%] | 18h | 16h |
| 8 | 1.2.2 | Diseño de diagramas ER y UML | 18h | 2025-09-03 A | 2025-09-05 A | 7 | 100% |  |  |  |  | René Veloso [25%] | 18h | 18h |
| 9 | 1.2.3 | Configuración inicial de Azure SQL Server | 24h | 2025-09-08 A | 2025-09-11 A | 8 | 100% |  |  |  |  | Vicente Galvez [25%]; René Veloso [25%] | 24h | 24h |
| 10 | 1.3 | **SPRINT 1: Infraestructura & Backend Core** | 13.5d | 2025-09-11 A | 2025-10-02 |  | 72% | 3.81d | 49.38d |  |  |  | 87h | 71.28h |
| 11 | 1.3.1 | **Configuración de Entornos y Arquitectura Inicial** | 4.25d | 2025-09-11 A | 2025-09-17 |  | 79% | 0.88d | 58.62d |  |  |  | 30h | 27h |
| 12 | 1.3.1.1 | Setup de entorno Django y Azure | 12h | 2025-09-11 A | 2025-09-12 | 9 | 58% | 5h | 2.5d | 0.5d |  | Vicente Galvez [25%] | 8h | 7h |
| 13 | 1.3.1.2 | Desarrollo de modelos de datos | 18h | 2025-09-15 A | 2025-09-17 | 12 | 89% | 2h | 55.38d |  |  | René Veloso [25%] | 18h | 16h |
| 14 | 1.3.1.3 | Instalación prerrequisitos, vs code, node.js | 3h | 2025-09-11 A | 2025-09-11 A | 13 | 100% |  |  |  |  | Gustavo Pezzini [25%] | 3h | 3h |
| 15 | 1.3.1.4 | Instalación vite, react, tailwindcss, depedencias | 1h | 2025-09-11 A | 2025-09-11 A | 14 | 100% |  |  |  |  | Gustavo Pezzini [25%] | 1h | 1h |
| 16 | 1.3.2 | Configurar vs code y extensiones | 1h | 2025-09-11 A | 2025-09-11 A | 15 | 100% |  |  |  |  | Gustavo Pezzini [25%] | 1h | 1h |
| 17 | 1.3.3 | Implementación de APIs básicas para Login usuarios | 8h | 2025-09-17 A | 2025-09-22 A | 16 | 100% |  |  |  |  | Vicente Galvez [25%] | 8h | 8h |
| 18 | 1.3.4 | CRUD gestión de pedidos | 28.8h | 2025-09-24 A | 2025-09-29 | 17 | 90% | 2.88h | 0.9d | 0.4d |  | Vicente Galvez [25%] | 24h | 23.28h |
| 19 | 1.3.5 | Pruebas unitarias iniciales | 20h | 2025-09-30 A | 2025-10-02 | 18 | 20% | 16h | 0d |  |  | Gustavo Pezzini [25%]; René Veloso [25%]; Vicente Galvez [25%] | 24h | 12h |
| 20 | 1.4 | **SPRINT 2: Frontend Core & PWA** | 14d | 2025-10-02 A | 2025-10-21 |  | 39% | 8.6d | 0d |  |  |  | 40h | 15.1h |
| 21 | 1.4.1 | Arquitectura Frontend y Enrutamiento | 1.75d | 2025-10-02 A | 2025-10-03 | 19 | 43% | 1d | 0.62d | 0d |  | Gustavo Pezzini [25%] | 8h | 6h |
| 22 | 1.4.2 | Desarrollo Módulo de Autenticación | 2d | 2025-10-03 A | 2025-10-06 | 21 | 69% | 0.62d | 3.38d | 3d |  | Gustavo Pezzini [25%] | 4h | 2.75h |
| 23 | 1.4.3 | Desarrollo Dashboard Vendedor y Catálogo | 4d | 2025-10-10 A | 2025-10-15 | 22 | 9% | 3.62d | 0.4d | 0d |  | Gustavo Pezzini [25%] | 8h | 0.75h |
| 24 | 1.4.4 | Desarrollo Módulo Toma de Pedidos | 2d | 2025-10-09 A | 2025-10-16 | 23 | 70% | 0.6d | 0.4d | 0d |  | Gustavo Pezzini [25%] | 4h | 2.8h |
| 25 | 1.4.5 | Pruebas de usabilidad | 16h | 2025-10-10 A | 2025-10-17 | 24 | 70% | 4.8h | 0d |  | finish no earlier than 2025-10-14 | René Veloso [25%] | 4h | 2.8h |
| 26 | 1.4.6 | Sprint review y refinamiento | 2d | 2025-10-20 | 2025-10-21 | 25 |  |  | 0d |  |  | Gustavo Pezzini [25%]; René Veloso [25%]; Vicente Galvez [25%] | 12h |  |

| ID | WBS | Task | Type | Duration | Start | Finish | Predecessors | Total slack | Resources | Work |
| --- | --- | --- | --- | --- | --- | --- | --- | --- | --- | --- |
| 27 | 1.5 | **SPRINT 3: Integración & Sincronización** |  | 19.12d? | 2025-10-22 | 2025-11-18 |  | 0d |  | 32h |
| 28 | 1.5.1 | Setup de PWA manifest |  | 1d? | 2025-10-22 | 2025-10-22 | 26 | 0d |  |  |
| 29 | 1.5.2 | Implementación de modo offline |  | 1d? | 2025-10-23 | 2025-10-23 | 28 | 0d |  |  |
| 30 | 1.5.3 | Integración frontend-backend via APIs |  | 10.62d | 2025-10-24 | 2025-11-07 | 29 | 0d | Gustavo Pezzini [25%]; Vicente Galvez [25%] | 32h |
| 31 | 1.5.4 | Desarrollo de sincronización offline-online |  | 2d | 2025-11-07 | 2025-11-11 | 30 | 0d |  |  |
| 32 | 1.5.5 | Integración con POS simulado |  | 2d | 2025-11-11 | 2025-11-13 | 31 | 0d |  |  |
| 33 | 1.5.6 | Manejo de roles multiusuario |  | 2d | 2025-11-13 | 2025-11-17 | 32 | 0d |  |  |
| 34 | 1.5.7 | Pruebas integradas y de seguridad |  | 0.5d | 2025-11-17 | 2025-11-18 | 33 | 0d |  |  |
| 35 | 1.6 | **SPRINT 4: Funcionalidades Avanzadas & Optimización** |  | 7d | 2025-11-18 | 2025-11-27 |  | 0d |  |  |
| 36 | 1.6.1 | Implementación de reportes financieros y historial |  | 2d | 2025-11-18 | 2025-11-20 | 34 | 0d |  |  |
| 37 | 1.6.2 | Optimización de rendimiento (e.g., índices en BD) |  | 2d | 2025-11-20 | 2025-11-24 | 36 | 0d |  |  |
| 38 | 1.6.3 | Funcionalidades multisucursal |  | 2d | 2025-11-24 | 2025-11-26 | 37 | 0d |  |  |
| 39 | 1.6.4 | Pruebas de escalabilidad |  | 0.5d | 2025-11-26 | 2025-11-26 | 38 | 0d |  |  |
| 40 | 1.6.5 | Sprint review final |  | 0.5d | 2025-11-26 | 2025-11-27 | 39 | 0d |  |  |
| 41 | 1.7 | **UAT y Despliegue** |  | 3d | 2025-11-27 | 2025-12-02 |  | 0d |  |  |
| 42 | 1.7.1 | User Acceptance Testing (UAT) con escenarios reales |  | 2d | 2025-11-27 | 2025-12-01 | 40 | 0d |  |  |
| 43 | 1.7.2 | Despliegue en Azure App Service y Static Web Apps |  | 1d | 2025-12-01 | 2025-12-02 | 42 | 0d |  |  |
| 44 | 1.8 | **Documentación Final** |  | 5d | 2025-12-02 | 2025-12-10 |  | 0d |  |  |
| 45 | 1.8.1 | Redacción de documentos de planificación y control |  | 3d | 2025-12-02 | 2025-12-05 | 43 | 0d |  |  |
| 46 | 1.8.2 | Actualización de diagramas de arquitectura y BD |  | 1d | 2025-12-05 | 2025-12-09 | 45 | 0d |  |  |
| 47 | 1.8.3 | Reportes de pruebas |  | 1d | 2025-12-09 | 2025-12-10 | 46 | 0d |  |  |
| 48 | 1.9 | **Entrega y Presentación** |  | 2d | 2025-12-10 | 2025-12-12 |  | 0d |  |  |
| 49 | 1.9.1 | Preparación de demo funcional |  | 1d | 2025-12-10 | 2025-12-11 | 47 | 0d |  |  |
| 50 | 1.9.2 | Creación de presentación Capstone |  | 1d | 2025-12-11 | 2025-12-12 | 49 | 0d |  |  |
| 51 | 1.9.3 | Entrega final al docente | milestone | 0d | 2025-12-12 | 2025-12-12 | 50 | 0d |  |  |
